# Gantt chart

Schedule from MS Project, 2021-02-08 to 2022-08-05.
The University of Liverpool

## Calendars

- Standard: Mon-Fri 08:00-12:00, 13:00-17:00; Sat-Sun off.

## Schedule

| ID | WBS | Task | Type | Duration | Start | Finish | Predecessors | Total slack | Free slack | Constraint |
| --- | --- | --- | --- | --- | --- | --- | --- | --- | --- | --- |
| 1 | 1 | **BCI Project in Liverpool** |  | 390d? | 2021-02-08 | 2022-08-05 |  |  |  |  |
| 2 | 1.1 | **Literature Review and ground research** |  | 38.5d | 2021-02-08 | 2021-04-01 |  |  |  |  |
| 3 | 1.1.1 | Draft information sheet, research protocol |  | 22d | 2021-02-10 | 2021-03-11 |  | 99d | 0d | finish no earlier than 2021-03-11 |
| 4 | 1.1.2 | Meet with Prof Tang |  | 1d | 2021-03-12 | 2021-03-12 | 3 | 99d | 9d |  |
| 5 | 1.1.3 | Project plan & DNA submission | milestone | 0d | 2021-03-26 | 2021-03-26 | 4 | 355d |  | start no earlier than 2021-03-26 |
| 6 | 1.2 | **Ethics Application** |  | 170d? | 2021-02-08 | 2021-10-01 |  |  |  |  |
| 7 | 1.2.1 | University REC approval |  | 33d | 2021-02-15 | 2021-03-31 |  | 286d | 66d | finish no earlier than 2021-03-31 |
| 8 | 1.2.2 | Obtain HRA through IRAS |  | 104d | 2021-02-08 | 2021-07-01 |  | 220d | 0d | start no earlier than 2021-02-08 |
| 9 | 1.2.3 | Mersey Care Trust R&D Review |  | 43d | 2021-07-02 | 2021-08-31 | 7, 8 | 220d | 0d | finish no earlier than 2021-08-31 |
| 10 | 1.2.4 | Apply for research passport |  | 23d | 2021-09-01 | 2021-10-01 | 9 | 220d |  | finish no earlier than 2021-10-01 |
| 11 | 1.3 | **Develop BCI Algorithm** |  | 131d? | 2021-04-02 | 2021-10-01 | 2 |  |  |  |
| 12 | 1.3.1 | Obtain EEG cap | milestone | 0d | 2021-04-05 | 2021-04-05 |  | 84d | 0d | start no earlier than 2021-04-05 |
| 13 | 1.3.2 | Familiar with MATLAB toolbox |  | 5d | 2021-04-05 | 2021-04-09 | 12 | 84d | 0d |  |
| 14 | 1.3.3 | Preprocessing, feature extraction, classification |  | 45d | 2021-04-12 | 2021-06-11 | 13 | 84d | 0d |  |
| 15 | 1.3.4 | Control interface design: Rewarding schedule through image or sound |  | 40d | 2021-06-14 | 2021-08-06 | 14 | 84d | 0d |  |
| 16 | 1.3.5 | Test & verify on BCI interface |  | 40d | 2021-08-09 | 2021-10-01 | 15 | 84d | 45d |  |
| 17 | 1.4 | **Y1 Report writing** |  | 158d | 2021-02-08 | 2021-09-15 |  |  |  |  |
| 18 | 1.4.1 | Y1 Annual Progress Report |  | 22d | 2021-06-01 | 2021-06-30 |  | 287d | 0d | finish no earlier than 2021-06-30 |
| 19 | 1.4.2 | Submission of APR | milestone | 0d | 2021-06-30 | 2021-06-30 | 18 | 287d |  |  |
| 20 | 1.4.3 | Year 1 report: review paper draft |  | 118d | 2021-02-22 | 2021-08-04 |  | 237d | 0d | start no earlier than 2021-02-22 |
| 21 | 1.4.4 | Submission of Year 1 report | milestone | 0d | 2021-08-04 | 2021-08-04 | 20 | 237d | 0d |  |
| 22 | 1.4.5 | Year 1 IPAP meeting | milestone | 0d | 2021-09-08 | 2021-09-08 | 21FS+25d | 237d |  |  |
| 23 | 1.5 | **Intervention** |  | 135d | 2021-10-04 | 2022-04-08 | 11, 6 | 85d |  |  |
| 24 | 1.5.1 | Invite Volunteers |  | 30d | 2021-10-04 | 2021-11-12 |  | 85d | 0d |  |
| 25 | 1.5.2 | Perform neuralfeedback training |  | 50d | 2021-12-06 | 2022-02-11 | 24FS+15d, 16 | 85d | 0d | start no earlier than 2021-11-01 |
| 26 | 1.5.3 | Initial Data Analysis |  | 40d | 2022-02-14 | 2022-04-08 | 25 | 85d |  | start no earlier than 2022-01-03 |

Notes:
- 7: Engage with person who is responsible for ethics approval application in the department. / Person name: Mark Bowen. Ethic representitive/member within REE and department. / Send him application draft and seek advice. / Duration of the task will be determined once we have engagement with the REC team members
- 9: Engage with R&D manager during IRAS application. Email draft to R&D manager before submission
- 25: Example procedure for a 12-week intervention trial: / 1. Have cognitive assessments before the first intervention. / 2. 3 neuralfeedback training a week (could be 4 a week, or 2 a week), lasting for 12 weeks. / 3. At the mid-stage , ~6 weeks, participant takes another assessment / 4. By the end, participant take the assessment to see of he training enhance their cognitive function

| ID | WBS | Task | Type | Duration | Start | Finish | Predecessors | Total slack | Free slack | Constraint |
| --- | --- | --- | --- | --- | --- | --- | --- | --- | --- | --- |
| 27 | 1.6 | **Y2 Report Writing** |  | 113d | 2022-03-01 | 2022-08-04 |  |  |  |  |
| 28 | 1.6.1 | Y2 Annual Progress Report |  | 38d | 2022-05-09 | 2022-06-29 |  | 27d | 0d | start no earlier than 2022-05-09 |
| 29 | 1.6.2 | Submission of APR | milestone | 0d | 2022-06-30 | 2022-06-30 | 28 | 27d |  | start no earlier than 2022-06-30 |
| 30 | 1.6.3 | Year 2 report |  | 87d | 2022-04-01 | 2022-08-01 |  | 4d | 3d | start no earlier than 2022-04-01 |
| 31 | 1.6.4 | Submission of Year 2 report | milestone | 0d | 2022-08-04 | 2022-08-04 | 30 | 1d |  | finish no earlier than 2022-08-04 |
